# TRANSFAR-PIPLAN.Draft

Schedule from MS Project, 2013-01-08 to 2014-09-05, status date 2013-03-08.

## Calendars

- 项目日历: Mon-Fri 08:00-12:00, 13:00-17:00; Sat-Sun off. Exceptions (off unless hours are given): 2013-02-09 to 2013-02-15, 2013-02-16 to 2013-02-17 08:00-12:00, 13:00-17:00.

## Resources

| Resource | Rate |
| --- | --- |
| 咨询师 | 1 |
| 主任评估师 | 1 |
| EPG | 7 |
| 相关项目组 | 5 |
| 软件测试组 | 2 |
| ATMs | 2 |

## Schedule

| ID | WBS | Task | Type | Duration | Start | Finish | Predecessors | Total slack | Constraint | Resources | Work | Cost |
| --- | --- | --- | --- | --- | --- | --- | --- | --- | --- | --- | --- | --- |
| 1 | 1 | **CMMI3过程改进项目** |  | 431d | 2013-01-08 | 2014-09-05 |  | 0d |  |  | 8154h | 49,359 |
| 2 | 1.1 | 咨询公司选型阶段 |  | 35d | 2013-07-02 | 2013-08-19 |  | 0d | start no earlier than 2013-07-02 | EPG | 280h | 1,960 |
| 3 | 1.1 | **项目启动阶段** |  | 14.5d | 2013-08-20 | 2013-09-09 |  | 0d |  |  | 92h | 228.6 |
| 4 | 1.1.11 | 项目启动会议 |  | 0.5d | 2013-08-20 | 2013-08-20 | 2 | 0d | start no earlier than 2012-04-02 | EPG; 咨询师 | 8h | 37.6 |
| 5 | 1.1.22 | **过程访谈** |  | 4d | 2013-08-20 | 2013-08-26 |  | 0d |  |  | 28h | 31 |
| 6 | 1.2.2.1 | 高层经理访谈 |  | 0.5d | 2013-08-20 | 2013-08-20 | 4 | 0d | start no earlier than 2012-04-03 |  |  |  |
| 7 | 1.2.2.2 | CMMI项目负责人、研发负责人访谈 |  | 0.5d | 2013-08-21 | 2013-08-21 | 6 | 0d |  | 咨询师 | 4h | 6 |
| 8 | 1.2.2.3 | 研发人员访谈 |  | 1d | 2013-08-21 | 2013-08-22 | 7 | 0d |  | 咨询师 | 8h | 10 |
| 9 | 1.2.2.4 | 测试人员访谈 |  | 1d | 2013-08-22 | 2013-08-23 | 8 | 0d |  | 咨询师 | 8h | 4 |
| 10 | 1.2.2.5 | 人力资源部门访谈 |  | 0.5d | 2013-08-23 | 2013-08-23 | 9 | 0d |  | 咨询师 | 4h | 6 |
| 11 | 1.2.2.6 | 其他相关部门访谈 |  | 0.5d | 2013-08-26 | 2013-08-26 | 10 | 0d |  | 咨询师 | 4h | 5 |
| 12 | 1.1.33 | **过程改进计划制定** |  | 10d | 2013-08-26 | 2013-09-09 | 4 | 0d |  |  | 56h | 160 |
| 13 | 1.1.33.2 | 项目差距分析 |  | 2d | 2013-08-26 | 2013-08-28 | 11 | 0d |  | 咨询师 | 16h | 20 |
| 14 | 1.1.33.9 | EPG组建及制定EPG章程 |  | 3d | 2013-08-28 | 2013-09-02 | 13 | 0d |  | 咨询师 | 24h | 24 |
| 15 | 1.1.33.3 | 过程改进计划制定 |  | 5d | 2013-09-02 | 2013-09-09 | 14 | 0d |  | EPG [40%] | 16h | 116 |
| 16 | 1.1.3 | 项目启动结束 | milestone | 0d | 2013-09-09 | 2013-09-09 | 15 | 0d |  |  |  |  |
| 17 | 1.2 | **过程域培训阶段** |  | 8d | 2013-09-09 | 2013-09-19 | 2 | 0d |  |  | 96h | 386.4 |
| 18 | 1.2.9 | **CMMI3过程域知识培训** |  | 8d | 2013-09-09 | 2013-09-19 | 16 | 0d |  |  | 96h | 386.4 |
| 19 | 1.2.9.1 | CMMI Overview Training |  | 1d | 2013-09-09 | 2013-09-10 | 2 | 0d | start no earlier than 2012-02-01 | EPG; 咨询师 | 16h | 66.4 |
| 20 | 1.2.9.2 | 组织过程域培训[OPD&OPF&OT] |  | 1d | 2013-09-10 | 2013-09-11 | 19 | 0d |  | EPG; 咨询师 | 16h | 64 |
| 21 | 1.2.9.3 | 工程过程域培训(RD&RM&TS&PI&VER&VAL) |  | 2d | 2013-09-11 | 2013-09-13 | 20 | 0d |  | EPG; 咨询师 | 32h | 128 |
| 22 | 1.2.9.4 | 项目管理域培训[PP&PMC&RSKM&IPM] |  | 2d | 2013-09-13 | 2013-09-17 | 21 | 0d |  | EPG; 咨询师 | 32h | 128 |
| 23 | 1.2.9.5 | 支持过程域培训[MA&PPQA&CM&DAR] |  | 2d | 2013-09-17 | 2013-09-19 | 22 | 0d |  |  |  |  |
| 24 | 1.2.10 | 过程培训结束 | milestone | 0d | 2013-09-19 | 2013-09-19 | 23 | 0d |  |  |  |  |

Notes:
- 4: 参加人员及会议情况参见会议记录。

| ID | WBS | Task | Duration | Start | Finish | Predecessors | Total slack | Free slack | Resources | Work | Cost |
| --- | --- | --- | --- | --- | --- | --- | --- | --- | --- | --- | --- |
| 25 | 1.3 | **过程定义阶段** | 64d | 2013-09-26 | 2013-12-25 | 24FS+2d | 0d |  |  | 1064h | 7,269 |
| 26 | 1.4.1 | **过程定义** | 56d | 2013-09-26 | 2013-12-13 |  | 0d |  |  | 1008h | 7,096 |
| 27 | 1.4.1.1 | **组织管理过程定义** | 5d | 2013-09-26 | 2013-10-03 |  | 0d |  |  | 80h | 560 |
| 28 | 1.4.1.1.1 | 组织过程管理 [OPD&OPF] | 5d | 2013-09-26 | 2013-10-03 | 24FS+5d | 0d |  | EPG | 40h | 280 |
| 29 | 1.4.1.1.2 | 组织培训 [OT] | 5d | 2013-09-26 | 2013-10-03 | 24FS+5d | 0d |  | EPG | 40h | 280 |
| 30 | 1.4.1.2 | **工程过程定义** | 5d | 2013-10-08 | 2013-10-15 | 27FS+3d | 0d |  |  | 240h | 1,674 |
| 31 | 1.4.1.2.1 | 需求开发与管理[RD&RM] | 5d | 2013-10-08 | 2013-10-15 |  | 3d |  | EPG | 40h | 288 |
| 32 | 1.4.1.2.2 | 技术解决方案[TS] | 5d | 2013-10-08 | 2013-10-15 |  | 3d |  | EPG | 40h | 280 |
| 33 | 1.4.1.2.3 | 产品集成[PI] | 5d | 2013-10-08 | 2013-10-15 |  | 3d |  | EPG | 40h | 282 |
| 34 | 1.4.1.2.4 | 确认[VAL] | 5d | 2013-10-08 | 2013-10-15 |  | 3d |  | EPG | 40h | 264 |
| 35 | 1.4.1.2.5 | 客户验收[CA] | 5d | 2013-10-08 | 2013-10-15 |  | 3d |  | EPG | 40h | 276 |
| 36 | 1.4.1.2.6 | 验证[VER] | 5d | 2013-10-08 | 2013-10-15 |  | 0d |  | EPG | 40h | 284 |
| 37 | 1.4.1.3 | **项目管理过程定义** | 5d | 2013-10-22 | 2013-10-29 | 36FS+5d | 0d |  |  | 160h | 1,142 |
| 38 | 1.4.1.3.1 | 项目规划[PP] | 5d | 2013-10-22 | 2013-10-29 | 30FS+2d | 0d |  | EPG | 40h | 296 |
| 39 | 1.4.1.3.2 | 项目监控[PMC] | 5d | 2013-10-22 | 2013-10-29 | 30FS+2d | 0d |  | EPG | 40h | 288 |
| 40 | 1.4.1.3.3 | 风险管理[RSKM] | 5d | 2013-10-22 | 2013-10-29 | 30FS+2d | 0d |  | EPG | 40h | 280 |
| 41 | 1.4.1.3.4 | 结项管理[PCM] | 5d | 2013-10-22 | 2013-10-29 | 30FS+2d | 0d |  | EPG | 40h | 278 |
| 42 | 1.4.1.4 | **支持过程定义** | 5d | 2013-11-05 | 2013-11-12 | 37FS+5d | 0d |  |  | 128h | 896 |
| 43 | 1.4.1.4.1 | 质量保证 [QA] | 5d | 2013-11-05 | 2013-11-12 | 37FS+5d | 0d |  | EPG | 40h | 272 |
| 44 | 1.4.1.4.2 | 配置管理 [CM] | 5d | 2013-11-05 | 2013-11-12 | 37FS+5d | 0d |  | EPG | 40h | 288 |
| 45 | 1.4.1.4.3 | 度量分析 [MA] | 3d | 2013-11-05 | 2013-11-08 | 37FS+5d | 2d |  | EPG | 24h | 184 |
| 46 | 1.4.1.4.4 | 决策分析与解决方案 [DAR] | 3d | 2013-11-05 | 2013-11-08 | 37FS+5d | 2d |  | EPG | 24h | 152 |
| 47 | 1.4.1.5 | **过程资产** | 20d | 2013-11-15 | 2013-12-13 | 42FS+3d | 0d |  |  | 400h | 2,824 |
| 48 | 1.4.1.5.1 | 组织方针政策 | 5d | 2013-11-15 | 2013-11-22 | 42 | 195.5d | 0d | EPG | 40h | 280 |
| 49 | 1.4.1.5.2 | 软件生命周期说明 | 5d | 2013-11-15 | 2013-11-22 | 42 | 195.5d | 0d | EPG | 40h | 280 |
| 50 | 1.4.1.5.3 | 裁剪指南 | 5d | 2013-11-15 | 2013-11-22 | 42 | 0d |  | EPG | 40h | 288 |
| 51 | 1.4.1.5.4 | 工作环境指南 | 5d | 2013-11-22 | 2013-11-29 | 48 | 195.5d | 0d | EPG | 40h | 272 |
| 52 | 1.4.1.5.5 | 团队建立指南 | 5d | 2013-11-29 | 2013-12-06 | 51 | 195.5d |  | EPG | 40h | 280 |
| 53 | 1.4.1.5.6 | 组织度量库 | 5d | 2013-11-22 | 2013-11-29 | 49 | 195.5d | 0d | EPG | 40h | 280 |
| 54 | 1.4.1.5.7 | 风险列表库 | 5d | 2013-11-29 | 2013-12-06 | 53 | 195.5d |  | EPG | 40h | 280 |
| 55 | 1.4.1.5.8 | 经验教训库 | 5d | 2013-11-22 | 2013-11-29 | 50 | 0d |  | EPG | 40h | 280 |
| 56 | 1.4.1.5.9 | 培训数据库 | 5d | 2013-11-29 | 2013-12-06 | 55 | 0d |  | EPG | 40h | 280 |
| 57 | 1.4.1.5.10 | 其它 | 5d | 2013-12-06 | 2013-12-13 | 56 | 0d |  | EPG | 40h | 304 |

| ID | WBS | Task | Type | Duration | Start | Finish | Predecessors | Total slack | Free slack | Constraint | Resources | Work | Cost |
| --- | --- | --- | --- | --- | --- | --- | --- | --- | --- | --- | --- | --- | --- |
| 58 | 1.4.2 | **过程定义文档审核与指导（外部）** |  | 45d | 2013-10-17 | 2013-12-19 |  | 43d |  |  |  | 32h | 32 |
| 59 | 1.4.2.1 | CMMI-ML3级文档体系编制与评审指导(一) |  | 2d | 2013-10-17 | 2013-10-21 | 36FS+2d | 229.5d |  |  | 咨询师 | 16h | 16 |
| 60 | 1.4.2.2 | CMMI-ML3级文档体系编制与评审指导（二） |  | 2d | 2013-12-17 | 2013-12-19 | 57FS+2d | 0d |  |  | 咨询师 | 16h | 16 |
| 61 | 1.4.3 | **过程定义文档评审与审批（内部）** |  | 2d | 2013-12-23 | 2013-12-25 | 60FS+2d | 0d |  |  |  | 24h | 141 |
| 62 | 1.4.3.1 | 组织管理过程评审 |  | 0.5d | 2013-12-23 | 2013-12-23 |  | 0d |  |  | EPG | 4h | 21 |
| 63 | 1.4.3.2 | 工程过程评审 |  | 0.5d | 2013-12-24 | 2013-12-24 | 62 | 0d |  |  | EPG | 4h | 49 |
| 64 | 1.4.3.3 | 项目管理过程评审 |  | 0.5d | 2013-12-24 | 2013-12-24 | 63 | 0d |  |  | 咨询师; EPG | 8h | 32 |
| 65 | 1.4.3.4 | 支持过程评审 |  | 0.5d | 2013-12-25 | 2013-12-25 | 64 | 0d |  |  | 咨询师; EPG | 8h | 39 |
| 66 | 1.4.4 | 文档形成OSSPv1.0基线，过程定义结束 | milestone | 0d | 2013-12-25 | 2013-12-25 | 65 | 0d |  |  | EPG |  |  |
| 67 | 1.5 | **过程试点与推广阶段** |  | 165.5d | 2013-12-26 | 2014-08-14 |  | 0d |  |  |  | 2561h | 12,377 |
| 68 | 1.5.1 | **OSSP文档培训** |  | 3.5d | 2013-12-26 | 2013-12-31 | 66FS+1d | 0d |  |  |  | 28h | 196 |
| 69 | 1.5.1.1 | 过程培训准备 |  | 1.5d | 2013-12-26 | 2013-12-27 | 66 | 0d |  | start no earlier than 2012-04-16 | EPG | 12h | 84 |
| 70 | 1.5.1.2 | 组织管理过程培训 |  | 0.5d | 2013-12-30 | 2013-12-30 | 69 | 0d |  |  | EPG | 4h | 28 |
| 71 | 1.5.1.3 | 项目管理过程培训 |  | 0.5d | 2013-12-30 | 2013-12-30 | 70 | 0d |  |  | EPG | 4h | 28 |
| 72 | 1.5.1.4 | 工程过程培训 |  | 0.5d | 2013-12-31 | 2013-12-31 | 71 | 0d |  |  | EPG | 4h | 28 |
| 73 | 1.5.1.5 | 支持过程培训 |  | 0.5d | 2013-12-31 | 2013-12-31 | 72 | 0d |  |  | EPG | 4h | 28 |
| 74 | 1.5.1.6 | OSSP文档培训结束，发布OSSP | milestone | 0d | 2013-12-31 | 2013-12-31 | 73 | 0d |  |  |  |  |  |
| 75 | 1.5.2 | **过程试点与推广** |  | 132d | 2014-02-11 | 2014-08-14 | 74FS+30d | 0d |  |  |  | 2533h | 12,181 |
| 76 | 1.5.2.1 | **试点项目实施** |  | 130d | 2014-02-11 | 2014-08-12 |  | 0d |  |  |  | 2409h | 12,045 |
| 77 | 1.5.2.1.1 | 试点项目1 |  | 130d | 2014-02-11 | 2014-08-12 | 74 | 0d |  | finish no earlier than 2013-05-31 | 相关项目组 | 1006h | 5,030 |
| 78 | 1.5.2.1.2 | 试点项目2 |  | 100d | 2014-02-11 | 2014-07-01 | 74 | 30d |  | start no earlier than 2013-03-11 | 相关项目组 | 780h | 3,900 |
| 79 | 1.5.2.1.3 | 试点项目3 |  | 80d | 2014-02-11 | 2014-06-03 |  | 50d |  | start no earlier than 2013-04-12 | 相关项目组 | 623h | 3,115 |
| 80 | 1.5.2.2 | **试点项目实施指导** |  | 112d | 2014-03-12 | 2014-08-14 |  | 16d |  |  |  | 124h | 136 |
| 81 | 1.5.2.2.1 | 试点项目实施指导（一） |  | 3.5d | 2014-03-12 | 2014-03-17 | 77SS+20d | 62d | 0d |  | 咨询师 | 28h | 28 |
| 82 | 1.5.2.2.2 | 试点项目实施指导（二） |  | 2d | 2014-04-09 | 2014-04-10 | 81SS+20d | 62d | 0d |  | 咨询师 | 16h | 20 |
| 83 | 1.5.2.2.3 | 试点项目实施指导（三） |  | 2d | 2014-05-07 | 2014-05-08 | 82SS+20d | 62d | 0d |  | 咨询师 | 16h | 20 |
| 84 | 1.5.2.2.4 | 试点项目实施指导（四） |  | 6d | 2014-06-04 | 2014-06-11 | 83SS+20d | 62d |  |  | 咨询师 | 48h | 48 |
| 85 | 1.5.2.2.5 | 试点阶段总结及体系优化指导 |  | 2d | 2014-08-13 | 2014-08-14 | 76 | 0d |  |  | 咨询师 | 16h | 20 |
| 86 | 1.5.3 | 过程试点与推广结束 | milestone | 0d | 2014-08-14 | 2014-08-14 | 85 | 0d |  |  | EPG |  |  |

Notes:
- 68: 培训主管负责过程培训的计划与组织；包括：培训老师、受训人员的召集；培训地点的安排等相关事宜。
- 70: 培训老师提供相关内容： / 1、培训内容 / 2、培训时间 / 3、培训考核
- 71: 培训老师提供相关内容： / 1、培训内容 / 2、培训时间 / 3、培训考核
- 72: 培训老师提供相关内容： / 1、培训内容 / 2、培训时间 / 3、培训考核
- 73: 培训老师提供相关内容： / 1、培训内容 / 2、培训时间 / 3、培训考核

| ID | WBS | Task | Duration | Start | Finish | Predecessors | Total slack | Free slack | Constraint | Resources | Work | Cost |
| --- | --- | --- | --- | --- | --- | --- | --- | --- | --- | --- | --- | --- |
| 87 | 1.6 | **预评估阶段** | 3d | 2014-08-19 | 2014-08-21 | 86FS+2d | 0d |  |  | EPG; 咨询师 | 72h | 216 |
| 88 | 1.6.1 | 预评估准备 | 1d | 2014-08-19 | 2014-08-19 |  | 0d |  | start no earlier than 2013-04-02 | 咨询师 | 8h | 8 |
| 89 | 1.6.2 | 现场预评估与报告 | 2d | 2014-08-20 | 2014-08-21 | 88 | 0d |  | start no earlier than 2013-08-26 | 咨询师 | 16h | 16 |
| 90 | 1.7 | **正式评估阶段** | 6d | 2014-08-29 | 2014-09-05 | 87FS+5d | 0d |  |  | EPG; ATMs; 主任评估师 | 229h | 602 |
| 91 | 1.7.1 | SCAMPI方法培训 | 1d | 2014-08-29 | 2014-08-29 |  | 0d |  | start no earlier than 2013-06-03 | 主任评估师 | 8h | 8 |
| 92 | 1.7.2 | Onsite 评估 | 5d | 2014-09-01 | 2014-09-05 | 91 | 0d |  |  | 主任评估师; ATMs | 79h | 118 |
| 93 | 1.8 | **过程改进建议搜集，试点项目指导，修订OSSP** | 238d | 2013-01-08 | 2013-12-10 |  | 193d |  |  | EPG | 1888h | 13,216 |
| 94 | 1.8.1 | 过程改进建议搜集，试点项目指导，修订OSSP 1 | 1d | 2013-07-09 | 2013-07-09 | 106 | 303d |  |  |  |  |  |
| 95 | 1.8.2 | 过程改进建议搜集，试点项目指导，修订OSSP 2 | 1d | 2013-08-08 | 2013-08-08 |  | 281d |  | start no earlier than 2013-08-08 |  |  |  |
| 96 | 1.8.3 | 过程改进建议搜集，试点项目指导，修订OSSP 3 | 1d | 2013-09-10 | 2013-09-10 |  | 258d |  | start no earlier than 2013-09-10 |  |  |  |
| 97 | 1.8.4 | 过程改进建议搜集，试点项目指导，修订OSSP 4 | 1d | 2013-10-08 | 2013-10-08 |  | 238d |  | start no earlier than 2013-10-08 |  |  |  |
| 98 | 1.8.5 | 过程改进建议搜集，试点项目指导，修订OSSP 5 | 1d | 2013-11-08 | 2013-11-08 |  | 215d |  | start no earlier than 2013-11-08 |  |  |  |
| 99 | 1.8.6 | 过程改进建议搜集，试点项目指导，修订OSSP 6 | 1d | 2013-12-10 | 2013-12-10 |  | 193d |  | start no earlier than 2013-12-10 |  |  |  |
| 100 | 1.8.7 | 过程改进建议搜集，试点项目指导，修订OSSP 7 | 1d | 2013-01-08 | 2013-01-08 |  | 430d |  | start no earlier than 2013-01-08 |  |  |  |
| 101 | 1.8.8 | 过程改进建议搜集，试点项目指导，修订OSSP 8 | 1d | 2013-02-08 | 2013-02-08 |  | 407d |  | start no earlier than 2013-02-08 |  |  |  |
| 102 | 1.8.9 | 过程改进建议搜集，试点项目指导，修订OSSP 9 | 1d | 2013-03-08 | 2013-03-08 |  | 390d |  | start no earlier than 2013-03-08 |  |  |  |
| 103 | 1.8.10 | 过程改进建议搜集，试点项目指导，修订OSSP 10 | 1d | 2013-04-08 | 2013-04-08 |  | 369d |  | start no earlier than 2013-04-08 |  |  |  |
| 104 | 1.8.11 | 过程改进建议搜集，试点项目指导，修订OSSP 11 | 1d | 2013-05-08 | 2013-05-08 |  | 347d |  | start no earlier than 2013-05-08 |  |  |  |
| 105 | 1.8.12 | 过程改进建议搜集，试点项目指导，修订OSSP 12 | 1d | 2013-06-10 | 2013-06-10 |  | 324d |  | start no earlier than 2013-06-08 |  |  |  |
| 106 | 1.8.13 | 过程改进建议搜集，试点项目指导，修订OSSP 13 | 1d | 2013-07-08 | 2013-07-08 |  | 303d | 0d | start no earlier than 2013-07-08 |  |  |  |
| 107 | 1.8.14 | 过程改进建议搜集，试点项目指导，修订OSSP 14 | 1d | 2013-08-08 | 2013-08-08 |  | 281d |  | start no earlier than 2013-08-08 |  |  |  |
| 108 | 1.8.15 | 过程改进建议搜集，试点项目指导，修订OSSP 15 | 1d | 2013-09-09 | 2013-09-09 |  | 259d |  | start no earlier than 2013-09-08 |  |  |  |
| 109 | 1.9 | **EPG每月例会** | 236d | 2013-01-10 | 2013-12-10 |  | 193d |  |  | EPG | 1872h | 13,104 |
| 110 | 1.9.1 | EPG每月例会 1 | 1d | 2013-07-10 | 2013-07-10 |  | 302d |  | start no earlier than 2013-07-10 |  |  |  |
| 111 | 1.9.2 | EPG每月例会 2 | 1d | 2013-08-12 | 2013-08-12 |  | 279d |  | start no earlier than 2013-08-10 |  |  |  |
| 112 | 1.9.3 | EPG每月例会 3 | 1d | 2013-09-10 | 2013-09-10 |  | 258d |  | start no earlier than 2013-09-10 |  |  |  |
| 113 | 1.9.4 | EPG每月例会 4 | 1d | 2013-10-10 | 2013-10-10 |  | 236d |  | start no earlier than 2013-10-10 |  |  |  |
| 114 | 1.9.5 | EPG每月例会 5 | 1d | 2013-11-12 | 2013-11-12 |  | 213d |  | start no earlier than 2013-11-12 |  |  |  |
| 115 | 1.9.6 | EPG每月例会 6 | 1d | 2013-12-10 | 2013-12-10 |  | 193d |  | start no earlier than 2013-12-10 |  |  |  |
| 116 | 1.9.7 | EPG每月例会 7 | 1d | 2013-01-10 | 2013-01-10 |  | 428d |  | start no earlier than 2013-01-10 |  |  |  |
| 117 | 1.9.8 | EPG每月例会 8 | 1d | 2013-02-16 | 2013-02-16 |  | 406d |  | start no earlier than 2013-02-10 |  |  |  |
| 118 | 1.9.9 | EPG每月例会 9 | 1d | 2013-03-11 | 2013-03-11 |  | 389d |  | start no earlier than 2013-03-10 |  |  |  |
| 119 | 1.9.10 | EPG每月例会 10 | 1d | 2013-04-10 | 2013-04-10 |  | 367d |  | start no earlier than 2013-04-10 |  |  |  |
| 120 | 1.9.11 | EPG每月例会 11 | 1d | 2013-05-10 | 2013-05-10 |  | 345d |  | start no earlier than 2013-05-10 |  |  |  |
| 121 | 1.9.12 | EPG每月例会 12 | 1d | 2013-06-10 | 2013-06-10 |  | 324d |  | start no earlier than 2013-06-10 |  |  |  |
| 122 | 1.9.13 | EPG每月例会 13 | 1d | 2013-07-10 | 2013-07-10 |  | 302d |  | start no earlier than 2013-07-10 |  |  |  |
| 123 | 1.9.14 | EPG每月例会 14 | 1d | 2013-08-12 | 2013-08-12 |  | 279d |  | start no earlier than 2013-08-10 |  |  |  |
| 124 | 1.9.15 | EPG每月例会 15 | 1d | 2013-09-10 | 2013-09-10 |  | 258d |  | start no earlier than 2013-09-10 |  |  |  |
